# caGrid-1-3

Schedule from MS Project, 2008-07-17 to 2008-08-29, A marks actual dates.
Personal

## Calendars

- Standard: Mon-Fri 08:00-12:00, 13:00-17:00; Sat-Sun off.

## Resources

| Resource |
| --- |
| Scott Oster |
| Steve Langella |
| Shannon Hastings |
| David Ervin |
| Santhosh Garmilla |
| John Eisenschmidt |
| Knowledge Center |
| Carolyn Klinger |
| Quality Assurance |
| Systems |
| Manav |
| SO/Ravi? |

## Schedule

| ID | WBS | Task | Type | Duration | Start | Finish | Predecessors | Total slack | Free slack | Resources | Work |
| --- | --- | --- | --- | --- | --- | --- | --- | --- | --- | --- | --- |
| 1 | 1.0 | **Gold Compatibility** |  | 21d? | 2008-07-17 | 2008-08-14 |  | 9.36d |  |  | 505h |
| 2 | 1.1 | **GME Rewrite** |  | 21d? | 2008-07-17 | 2008-08-14 |  | 9.36d |  |  | 217h |
| 3 | 1.1.0 | Start | milestone | 0d | 2008-07-17 | 2008-07-17 |  | 9.36d | 0d | Scott Oster [50%] |  |
| 4 | 1.1.1 | MySQL 5.0 Support |  | 1d? | 2008-07-18 | 2008-07-18 | 3 | 28.36d | 19d | Scott Oster [50%] | 4h |
| 5 | 1.1.3 | Schemas with Cycles |  | 6.25d? | 2008-07-18 | 2008-07-28 | 3 | 23.11d | 13.75d | Scott Oster [50%] | 25h |
| 6 | 1.1.4 | Schemas with Includes/Redefines |  | 5d? | 2008-07-18 | 2008-07-24 | 3 | 24.36d | 15d | Scott Oster [50%] | 20h |
| 7 | 1.1.5 | URI Valid as Namespace |  | 1d? | 2008-07-18 | 2008-07-18 | 3 | 28.36d | 19d | Scott Oster [50%] | 4h |
| 8 | 1.1.6 | Metadata and WSDL reflect service operations |  | 1d? | 2008-07-18 | 2008-07-18 | 3 | 28.36d | 19d | Scott Oster [50%] | 4h |
| 9 | 1.1.7 | Update/Delete non-production schemas |  | 5d? | 2008-07-18 | 2008-07-24 | 3 | 24.36d | 15d | Scott Oster [50%] | 20h |
| 10 | 1.1.8 | Associate Arbitrarty Metadata or Annotations |  | 10d? | 2008-07-18 | 2008-07-31 | 3 | 19.36d | 10d | Scott Oster [50%] | 40h |
| 11 | 1.1.9 | Validate that XML conforms to schema in GME |  | 5d? | 2008-07-18 | 2008-07-24 | 3 | 24.36d | 15d | Scott Oster [50%] | 20h |
| 12 | 1.1.10 | Non-RFE Development |  | 20d | 2008-07-18 | 2008-08-14 | 3 | 9.36d | 0d | Scott Oster [50%] | 80h |
| 13 | 1.1.11 | Finish | milestone | 0d | 2008-08-14 | 2008-08-14 | 4, 5, 6, 7, 8, 9, 10, 11, 12 | 9.36d | 0d | Scott Oster [50%] |  |
| 14 | 1.2 | **caDSR Grid Service Replacement** |  | 21d? | 2008-07-17 | 2008-08-14 |  | 9.36d |  |  | 140h |
| 15 | 1.2.1 | Start | milestone | 0d | 2008-07-17 | 2008-07-17 |  | 9.36d | 0d | Scott Oster [50%] |  |
| 16 | 1.2.2 | Design |  | 5d? | 2008-07-18 | 2008-07-24 | 15 | 24.36d | 15d | Scott Oster [50%] | 20h |
| 17 | 1.2.3 | Development |  | 20d? | 2008-07-18 | 2008-08-14 | 15 | 9.36d | 0d | Scott Oster [50%] | 80h |
| 18 | 1.2.4 | Migration of code depenedencies on caDSR grid service (Introduce extensions) |  | 5d? | 2008-07-18 | 2008-07-24 | 15 | 24.36d | 15d | Scott Oster [50%] | 20h |
| 19 | 1.2.4 | Developer Testing |  | 5d? | 2008-07-18 | 2008-07-24 | 15 | 24.36d | 15d | Scott Oster [50%] | 20h |
| 20 | 1.2.5 | Finish | milestone | 0d | 2008-08-14 | 2008-08-14 | 16, 17, 19, 18 | 9.36d | 0d | Scott Oster [50%] |  |
| 21 | 1.3 | **Make Core Services Gold Compatible** |  | 5d? | 2008-07-17 | 2008-07-23 |  | 26.36d |  |  | 148h |
| 22 | 1.3.1 | Start | milestone | 0d | 2008-07-17 | 2008-07-17 |  | 26.36d | 0d |  |  |
| 23 | 1.3.2 | Identify Services to be made Gold Compatible |  | 1d? | 2008-07-18 | 2008-07-18 | 22 | 29.36d | 3d | Scott Oster [50%] | 4h |
| 24 | 1.3.3 | **Register Object and Metadata Models** |  | 5d | 2008-07-17 | 2008-07-23 |  | 26.36d |  | John Eisenschmidt | 144h |
| 25 | 1.3.3.1 | Start | milestone | 0d | 2008-07-17 | 2008-07-17 | 22 | 26.36d | 0d | John Eisenschmidt |  |
| 26 | 1.3.3.2 | CQL |  | 5d | 2008-07-17 | 2008-07-23 | 25 | 26.36d | 0d | John Eisenschmidt | 40h |
| 27 | 1.3.3.3 | CQL Results |  | 2d | 2008-07-17 | 2008-07-18 | 25 | 29.36d | 3d | John Eisenschmidt | 16h |
| 28 | 1.3.3.4 | Service Metadata |  | 2d | 2008-07-17 | 2008-07-18 | 25 | 29.36d | 3d | John Eisenschmidt | 16h |
| 29 | 1.3.3.5 | Security Metadata |  | 2d | 2008-07-17 | 2008-07-18 | 25 | 29.36d | 3d | John Eisenschmidt | 16h |
| 30 | 1.3.3.6 | Data Services Object Model |  | 2d | 2008-07-17 | 2008-07-18 | 25 | 29.36d | 3d | John Eisenschmidt | 16h |
| 31 | 1.3.3.7 | Finish | milestone | 0d | 2008-07-23 | 2008-07-23 | 26, 27, 28, 29, 30 | 26.36d | 0d | John Eisenschmidt |  |
| 32 | 1.3.4 | Finish | milestone | 0d | 2008-07-23 | 2008-07-23 | 23, 31 | 26.36d |  |  |  |

Notes:
- 18: This creates a backwards incompatibility for existing Introduce installations which would expect to be able to communicate with the existing caDSR grid service; we should leave this instance running, and deprecate it (if ncessary, we can create new versions of these extensions for past releases of Introduce if necessary.
- 21: caGrid 1.3 should focus on non-backwards compatibility issues (not refactoring service interfaces); I will create a detailed wbs for this sepecifically

| ID | WBS | Task | Type | Duration | Start | Finish | Predecessors | Complete | Remaining | Total slack | Free slack | Resources | Work | Actual work |
| --- | --- | --- | --- | --- | --- | --- | --- | --- | --- | --- | --- | --- | --- | --- |
| 33 | 2.0 | **caCORE Integration** |  | 15d | 2008-07-17 | 2008-08-06 |  |  |  | 16.36d |  |  | 492h |  |
| 34 | 2.1 | Start | milestone | 0d | 2008-07-17 | 2008-07-17 |  |  |  | 16.36d | 0d |  |  |  |
| 35 | 2.2 | Implementation of Common Testing between Grid and SDK |  | 15d | 2008-07-17 | 2008-08-06 | 34 |  |  | 16.36d | 0d | David Ervin | 120h |  |
| 36 | 2.3 | Identify modeling gaps/requirements for the analytical/data service |  | 10d | 2008-07-17 | 2008-07-30 | 34 |  |  | 21.36d | 5d | David Ervin | 80h |  |
| 37 | 2.4 | CQL/CQL2 Integration in SDK |  | 15d | 2008-07-17 | 2008-08-06 | 34 |  |  | 16.36d | 0d | David Ervin | 120h |  |
| 38 | 2.5 | Data Service plug-in for SDK 4.1 |  | 10d | 2008-07-17 | 2008-07-30 | 34 |  |  | 21.36d | 5d | David Ervin | 80h |  |
| 39 | 2.6 | Introduce upgrade to SDK 4.1 |  | 5d | 2008-07-18 | 2008-07-24 | 34 |  |  | 25.36d | 9d | Scott Oster [50%] | 20h |  |
| 40 | 2.7 | Proxy Framework and XML serialization integration in Grid Service |  | 5d | 2008-07-17 | 2008-07-23 | 34 |  |  | 26.36d | 10d | Shannon Hastings | 40h |  |
| 41 | 2.8 | XMI Reader API Integration in Introduce |  | 5d | 2008-07-17 | 2008-07-23 | 34 |  |  | 26.36d | 10d | David Ervin [80%] | 32h |  |
| 42 | 2.9 | Finish | milestone | 0d | 2008-08-06 | 2008-08-06 | 35, 36, 37, 38, 39, 40, 41 |  |  | 16.36d |  |  |  |  |
| 43 | 3.0 | **Bug Fixes** |  | 5d? | 2008-07-17 A | 2008-07-23 |  | 7% | 4.66d? | 26.36d |  |  | 216.8h | 16h |
| 44 | 3.1 | Start | milestone | 0d | 2008-07-17 | 2008-07-17 |  |  |  | 27d | 0d |  |  |  |
| 45 | 3.2 | SDK 4 data service wizard fails with 'No Domain Model' |  | 1d? | 2008-07-17 | 2008-07-17 | 44 |  |  | 30.36d | 3d | David Ervin | 8h |  |
| 46 | 3.3 | When the trasfer resource is being destroyed it tries to delete the cache file. If the cache files does not exist it throws a resource exception. |  | 1d? | 2008-07-17 | 2008-07-17 | 44 |  |  | 30.36d | 3d | Shannon Hastings | 8h |  |
| 47 | 3.4 | 2 >= 2 error in GridGrouper my groups |  | 1d? | 2008-07-17 | 2008-07-17 | 44 |  |  | 30.36d | 3d | Steve Langella | 8h |  |
| 48 | 3.5 | Introduce is not passing any system properties on to it's ant calls it makes when running the engine. |  | 1d? | 2008-07-17 | 2008-07-17 | 44 |  |  | 30.36d | 3d | Shannon Hastings | 8h |  |
| 49 | 3.6 | caDSR Grid Service API does not provide access to semantic metadata (concept codes) |  | 2d? | 2008-07-18 | 2008-07-21 | 44 |  |  | 28.36d | 2d | Scott Oster [50%] | 8h |  |
| 50 | 3.7 | Security Service Metadata Anonymous Clients Ignored in Grid Grouper |  | 1d? | 2008-07-17 | 2008-07-17 | 44 |  |  | 30.36d | 3d | Steve Langella | 8h |  |
| 51 | 3.8 | caCORE backed data services don't handle queries with single quotes in query parameters |  | 1d? | 2008-07-17 A | 2008-07-17 A | 44 | 100% |  |  |  | David Ervin | 8h | 8h |
| 52 | 3.9 | caDSR Type Browser doesn't let you correct a namespace that is invalid (as opposed to not found) |  | 4d? | 2008-07-18 | 2008-07-23 | 44 |  |  | 26.36d | 0d | Scott Oster [50%] | 16h |  |
| 53 | 3.10 | DataService gets in inconsistent state and returns confusing errors when not properly initialized |  | 1d? | 2008-07-17 | 2008-07-17 | 44 |  |  | 30.36d | 3d | David Ervin | 8h |  |
| 54 | 3.11 | Grid Grouper Authorization not configured but service can be deployed |  | 1d? | 2008-07-17 | 2008-07-17 | 44 |  |  | 30.36d | 3d | Steve Langella | 8h |  |
| 55 | 3.12 | Introduce error importing Type schemas it generated. |  | 1d? | 2008-07-17 | 2008-07-17 | 44 |  |  | 30.36d | 3d | Shannon Hastings | 8h |  |
| 56 | 3.13 | GTS does not remove permissions when a CA is deleted. |  | 1d? | 2008-07-17 | 2008-07-17 | 44 |  |  | 30.36d | 3d | Steve Langella | 8h |  |
| 57 | 3.14 | Spaces in GLOBUS_LOCATION causing errors on deployment for Introduce created services |  | 1d? | 2008-07-17 | 2008-07-17 | 44 |  |  | 30.36d | 3d | Shannon Hastings | 8h |  |
| 58 | 3.15 | When importing a method from another introduce service package names are broken |  | 1d? | 2008-07-17 | 2008-07-17 | 44 |  |  | 30.36d | 3d | Shannon Hastings | 8h |  |
| 59 | 3.16 | SyncGTS is an Introduce 1.1 service will conflict with a container running newer services. |  | 1d? | 2008-07-17 | 2008-07-17 | 44 |  |  | 30.36d | 3d | Steve Langella | 8h |  |
| 60 | 3.17 | Lowercase chars in complexType names from schema can cause compile failure |  | 1d? | 2008-07-17 | 2008-07-17 | 44 |  |  | 30.36d | 3d | John Eisenschmidt | 8h |  |
| 61 | 3.18 | caGrid authentication service authentications fail after change of password on NCI LDAP |  | 1d? | 2008-07-17 A | 2008-07-17 A | 44 | 100% |  |  |  | Steve Langella | 8h | 8h |
| 62 | 3.19 | SyncGTS is using log4j directly instead of commons logging which causes some logging statements to not be shown in Tomcat |  | 1d? | 2008-07-17 | 2008-07-17 | 44 |  |  | 30.36d | 3d | Steve Langella | 8h |  |
| 63 | 3.20 | Remove references to log4j in projects and only use commons logging |  | 2d? | 2008-07-17 | 2008-07-18 | 44 |  |  | 29.36d | 3d | Steve Langella; Scott Oster [50%]; Shannon Hastings; David Ervin | 28h |  |
| 64 | 3.21 | Multiple services using WS-Enumeration cannot run in same container |  | 1d? | 2008-07-17 | 2008-07-17 | 44 |  |  | 30.36d | 3d | David Ervin [80%] | 6.4h |  |
| 65 | 3.22 | Introduce configure types validator lets you save when there are validation errors |  | 1d? | 2008-07-17 | 2008-07-17 | 44 |  |  | 30.36d | 3d | Shannon Hastings | 8h |  |
| 66 | 3.23 | Subject in Dorian limited to 255 characters |  | 1d? | 2008-07-17 | 2008-07-17 | 44 |  |  | 30.36d | 3d | Steve Langella | 8h |  |
| 67 | 3.24 | Introduce Log Viewer hangs in certain scenarios |  | 1d? | 2008-07-17 | 2008-07-17 | 44 |  |  | 30.36d | 3d | Shannon Hastings | 8h |  |
| 68 | 3.25 | Gaards UI throws an error popup that makes the UI unusable |  | 1d? | 2008-07-18 | 2008-07-18 | 44 |  |  | 29.36d | 3d | Steve Langella [80%] | 6.4h |  |
| 69 | 3.26 | Finish | milestone | 0d | 2008-07-23 | 2008-07-23 | 45, 46, 47, 48, 49, 50, 51, 52, 53, 54, 55, 56, 57, 58, 59, 60, 61, 62, 63, 64, 65, 66, 68, 67 |  |  | 26.36d |  |  |  |  |

Notes:
- 40: This is a low priority and we might want to bump it
- 49: This is really a "missing feature" and should/would be satisfied be the new caDSR grid service / This is already referenced above in 1.2.2, just pointing it out explicitly.
- 51: I updated the tracker; this is a limitation which can't be fixed for caCORE SDK 3.1 and 3.2(.1), but was addressed in caGrid 1.2 when adding support for caCORE SDK 4.0. Should we close the bug?
- 60: This is something we can't fix; should we close the bug?

| ID | WBS | Task | Type | Duration | Start | Finish | Predecessors | Complete | Remaining | Total slack | Free slack | Resources | Work | Actual work |
| --- | --- | --- | --- | --- | --- | --- | --- | --- | --- | --- | --- | --- | --- | --- |
| 70 | 4.0 | **WebSSO** |  | 2d? | 2008-07-17 A | 2008-07-18 |  | 67% | 0.67d? | 28.36d |  |  | 48h | 32h |
| 71 | 4.1 | Start | milestone | 0d | 2008-07-17 | 2008-07-17 |  |  |  | 29.36d | 0d |  |  |  |
| 72 | 4.2 | Properties not set for service redirect/cookie age within the cas-servlet.xml file |  | 1d? | 2008-07-17 A | 2008-07-17 A | 71 | 100% |  |  |  | Santhosh Garmilla [50%] | 4h | 4h |
| 73 | 4.3 | CaGridWebSSOAttributeLoaderFilter will not work as designed |  | 1d? | 2008-07-17 A | 2008-07-17 A | 71 | 100% |  |  |  | Santhosh Garmilla [50%] | 4h | 4h |
| 74 | 4.4 | WebSSO project is missing jar dependencies for syncGTS |  | 1d? | 2008-07-17 A | 2008-07-17 A | 71 | 100% |  |  |  | Santhosh Garmilla [50%] | 4h | 4h |
| 75 | 4.5 | classnotfoundexception when deploying to tomcat 5.5+ |  | 1d? | 2008-07-17 A | 2008-07-17 A | 71 | 100% |  |  |  | Santhosh Garmilla [50%] | 4h | 4h |
| 76 | 4.6 | Update Build Process |  | 1d? | 2008-07-18 A | 2008-07-18 A | 71 | 100% |  |  |  | Santhosh Garmilla [50%] | 4h | 4h |
| 77 | 4.7 | Update the Sample Application |  | 1d? | 2008-07-17 A | 2008-07-17 A | 71 | 100% |  |  |  | Santhosh Garmilla [50%] | 4h | 4h |
| 78 | 4.8 | Create an Installer |  | 1d? | 2008-07-17 | 2008-07-17 | 71 |  |  | 29.36d | 1d | Santhosh Garmilla [50%] | 4h |  |
| 79 | 4.9 | Author System Tests for WebSSO |  | 1d? | 2008-07-17 | 2008-07-17 | 71 |  |  | 29.36d | 1d | Santhosh Garmilla [50%] | 4h |  |
| 80 | 4.10 | Acegi client |  | 1d? | 2008-07-17 A | 2008-07-17 A | 71 | 100% |  |  |  | Santhosh Garmilla [50%] | 4h | 4h |
| 81 | 4.11 | Single sign-out |  | 1d? | 2008-07-17 A | 2008-07-17 A | 71 | 100% |  |  |  | Santhosh Garmilla [50%] | 4h | 4h |
| 82 | 4.12 | Support out-of-box integration with Liferay (caGrid Portal 2.x) |  | 1d? | 2008-07-17 | 2008-07-17 | 71 |  |  | 29.36d | 1d | Santhosh Garmilla [50%] | 4h |  |
| 83 | 4.13 | Enhance existing documentation |  | 1d? | 2008-07-17 | 2008-07-17 | 71 |  |  | 29.36d | 1d | Santhosh Garmilla [50%] | 4h |  |
| 84 | 4.14 | Finish | milestone | 0d | 2008-07-18 | 2008-07-18 | 73, 74, 75, 76, 77, 78, 79, 80, 81, 82, 83, 72 |  |  | 28.36d | 0d |  |  |  |
| 85 | 5.0 | **Continuous Innovation** |  | 6d? | 2008-07-17 | 2008-07-24 |  |  |  | 25.36d |  |  | 68h |  |
| 86 | 5.1 | Start | milestone | 0d | 2008-07-17 | 2008-07-17 |  |  |  | 29.36d | 0d |  |  |  |
| 87 | 5.3 | Support common technology stack for caGrid infrastructure |  | 1d? | 2008-07-17 | 2008-07-17 | 86 |  |  | 30.36d | 0d | Knowledge Center | 8h |  |
| 88 | 5.3 | **Update installer** |  | 6d? | 2008-07-17 | 2008-07-24 |  |  |  | 25.36d |  |  | 40h |  |
| 89 | 5.3.1 | integrate latest portal release |  | 2d? | 2008-07-17 | 2008-07-18 |  |  |  | 29.36d |  | Manav | 16h |  |
| 90 | 5.3.2 | integrate WF client release? |  | 0.5d? | 2008-07-17 | 2008-07-17 |  |  |  | 30.86d |  | SO/Ravi? | 4h |  |
| 91 | 5.3.3 | updates for tech stack (tomcat versions, etc) |  | 5d? | 2008-07-18 | 2008-07-24 |  |  |  | 25.36d |  | Scott Oster [50%] | 20h |  |
| 92 | 5.4 | Replace cvs with subversion | milestone | 0d? | 2008-07-17 | 2008-07-17 | 86 |  |  | 30.36d | 0d | Knowledge Center |  |  |
| 93 | 5.5 | Common caBIG Ivy Repository |  | 2d? | 2008-07-17 | 2008-07-18 | 86 |  |  | 29.36d | 0d | Knowledge Center; Scott Oster [50%] | 12h |  |
| 94 | 5.6 | Remove old EVS grid service |  | 1d? | 2008-07-18 | 2008-07-18 | 86 |  |  | 29.36d | 0d | Scott Oster [50%] | 4h |  |
| 95 | 5.7 | Remove old caDSR grid service |  | 1d? | 2008-07-18 | 2008-07-18 | 86 |  |  | 29.36d | 0d | Scott Oster [50%] | 4h |  |
| 96 | 5.8 | Finish | milestone | 0d | 2008-07-18 | 2008-07-18 | 87, 92, 95, 93, 94 |  |  | 29.36d |  |  |  |  |

Notes:
- 78: We should discuss the scope of this.

| ID | WBS | Task | Type | Duration | Start | Finish | Predecessors | Complete | Remaining | Total slack | Free slack | Resources | Work | Actual work |
| --- | --- | --- | --- | --- | --- | --- | --- | --- | --- | --- | --- | --- | --- | --- |
| 97 | 6.0 | **Data Services** |  | 15d | 2008-07-17 | 2008-08-06 |  |  |  | 15.36d |  |  | 364.8h |  |
| 98 | 6.1 | Start | milestone | 0d | 2008-07-17 | 2008-07-17 |  |  |  | 15.36d | 0d |  |  |  |
| 99 | 6.2 | CQL/CQL2 Integration in SDK |  | 15d | 2008-07-17 | 2008-08-06 | 98 |  |  | 15.36d | 0d | David Ervin [80%] | 96h |  |
| 100 | 6.3 | FQP should support delegation |  | 5d | 2008-07-17 | 2008-07-23 | 98 |  |  | 25.36d | 10d | David Ervin [80%] | 32h |  |
| 101 | 6.4 | FQP should support BDT transfer of results |  | 10d | 2008-07-17 | 2008-07-30 | 98 |  |  | 20.36d | 5d | David Ervin [80%] | 64h |  |
| 102 | 6.5 | FQP should support ws-notification |  | 5d | 2008-07-17 | 2008-07-23 | 98 |  |  | 25.36d | 10d | David Ervin [80%] | 32h |  |
| 103 | 6.6 | DCQL fails when some target services are down |  | 5d | 2008-07-17 | 2008-07-23 | 98 |  |  | 25.36d | 10d | David Ervin [80%] | 32h |  |
| 104 | 6.7 | DCQL (FQP) should support query modifiers |  | 10d | 2008-07-17 | 2008-07-30 | 98 |  |  | 20.36d | 5d | David Ervin [80%] | 64h |  |
| 105 | 6.8 | Add additional utilities for working with query results |  | 5d | 2008-07-17 | 2008-07-23 | 98 |  |  | 25.36d | 10d | David Ervin [80%] | 32h |  |
| 106 | 6.9 | silent exceptions (no service properties from custom query processor) when adding a custom query processor using Introduce data extension |  | 2d | 2008-07-17 | 2008-07-18 | 98 |  |  | 28.36d | 13d | David Ervin [80%] | 12.8h |  |
| 107 | 6.10 | Finish | milestone | 0d | 2008-08-06 | 2008-08-06 | 99, 100, 101, 102, 104, 105, 106, 103 |  |  | 15.36d | 0d |  |  |  |
| 108 | 7.0 | **Introduce** |  | 21d? | 2008-07-17 A | 2008-08-14 |  | 11% | 18.67d? | 9.36d |  |  | 576h | 64h |
| 109 | 7.1 | Start | milestone | 0d | 2008-07-17 A | 2008-07-17 A |  | 100% |  |  |  |  |  |  |
| 110 | 7.2 | Refactor Introduce Security |  | 10d | 2008-07-17 A | 2008-07-30 A | 109 | 100% |  |  |  | Shannon Hastings [80%] | 64h | 64h |
| 111 | 7.3 | Grid Grouper Introduce Authorization Extension |  | 10d | 2008-07-31 | 2008-08-13 | 109, 110 |  |  | 0d |  | Shannon Hastings [80%] | 64h |  |
| 112 | 7.4 | CSM Introduce Authorization Extension |  | 10d | 2008-07-31 | 2008-08-13 | 109, 110 |  |  | 0d |  | Shannon Hastings [80%] | 64h |  |
| 113 | 7.5 | ivy support for introduce-created projects |  | 10d | 2008-07-17 | 2008-07-30 | 109 |  |  | 10d |  | Shannon Hastings [80%] | 64h |  |
| 114 | 7.6 | Need a way to hook in pre-deployment validation checks to enforce policy |  | 10d | 2008-07-17 | 2008-07-30 | 109 |  |  | 10d |  | Shannon Hastings [80%] | 64h |  |
| 115 | 7.7 | Change the way schemas are loaded and resolved by introduce. |  | 1d? | 2008-07-17 | 2008-07-17 | 109 |  |  | 19d |  | Shannon Hastings [80%] | 6.4h |  |
| 116 | 7.8 | Introduce extension for creating cagrid core services |  | 1d? | 2008-07-17 | 2008-07-17 | 109 |  |  | 19d |  | Shannon Hastings [80%] | 6.4h |  |
| 117 | 7.9 | Introduce Software Update needs re-engineered |  | 1d? | 2008-07-17 | 2008-07-17 | 109 |  |  | 19d |  | Shannon Hastings [80%] | 6.4h |  |
| 118 | 7.10 | Improve Introduce usability when adding extensions or service contexts |  | 4d | 2008-07-17 | 2008-07-22 | 109 |  |  | 16d |  | Shannon Hastings [80%] | 25.6h |  |
| 119 | 7.11 | Introduce services which support persistence are hard to customize persistence on the resource itself |  | 10d | 2008-07-17 | 2008-07-30 | 109 |  |  | 10d |  | Shannon Hastings [80%] | 64h |  |
| 120 | 7.12 | Introduce client code should be more override friendly |  | 10d | 2008-07-17 | 2008-07-30 | 109 |  |  | 10d |  | Shannon Hastings [80%] | 64h |  |
| 121 | 7.13 | Introduce clients do not set user credential when returning client handle to stateful resources |  | 5d | 2008-07-17 | 2008-07-23 | 109 |  |  | 15d |  | Shannon Hastings [80%] | 32h |  |
| 122 | 7.14 | Introduce Service tab should use tooltips in the jtree |  | 5d | 2008-07-17 | 2008-07-23 | 109 |  |  | 15d |  | Shannon Hastings [80%] | 32h |  |
| 123 | 7.15 | Introduce Feature Freeze (milestone) | milestone | 0d | 2008-08-13 | 2008-08-13 | 110, 111, 112, 113, 114, 115, 116, 117, 118, 119, 120, 121, 122 |  |  | 0d |  | Shannon Hastings [80%] |  |  |
| 124 | 7.16 | Introduce Upgraders (1.1->1.3) |  | 1d? | 2008-08-14 | 2008-08-14 | 123 |  |  | 9.36d | 0d | Shannon Hastings [80%] | 6.4h |  |
| 125 | 7.17 | Introduce Upgraders (1.2->1.3) |  | 1d? | 2008-08-14 | 2008-08-14 | 123 |  |  | 9.36d | 0d | Shannon Hastings [80%] | 6.4h |  |
| 126 | 7.18 | Problem with Anonymous Security Setting |  | 1d? | 2008-08-14 | 2008-08-14 | 123 |  |  | 9.36d | 0d | Shannon Hastings [80%] | 6.4h |  |
| 127 | 7.19 | Finish | milestone | 0d | 2008-08-14 | 2008-08-14 | 124, 125, 126 |  |  | 9.36d | 0d |  |  |  |

Notes:
- 104: We should hold off on this until CQL2 (and therefore DCQL2) are rolled out, as this requires a language change and would affect backwards compatibility
- 113: This is of limitied utility without 5.5; which likely won't be done in 1.3 timeline

| ID | WBS | Task | Type | Duration | Start | Finish | Predecessors | Complete | Remaining | Total slack | Free slack | Resources | Work | Actual work |
| --- | --- | --- | --- | --- | --- | --- | --- | --- | --- | --- | --- | --- | --- | --- |
| 128 | 8.0 | **Security** |  | 29d | 2008-07-17 A | 2008-08-26 |  | 4% | 27.76d | 1.36d |  |  | 448h | 19.2h |
| 129 | 8.1 | Start | milestone | 0d | 2008-07-17 | 2008-07-17 |  |  |  | 19.36d | 0d |  |  |  |
| 130 | 8.2 | Support multiple authentication profile |  | 5d | 2008-07-18 | 2008-07-24 | 129 |  |  | 24.36d | 24d | Steve Langella [80%] | 32h |  |
| 131 | 8.3 | Authentication Profile Service Metadata |  | 2d | 2008-07-18 | 2008-07-21 | 129 |  |  | 27.36d | 27d | Steve Langella [80%] | 12.8h |  |
| 132 | 8.4 | Update GAARDS UI to leverage new Authentication Profile / Trusted IdP metadata |  | 1d | 2008-07-18 | 2008-07-18 | 129 |  |  | 28.36d | 28d | Steve Langella [80%] | 6.4h |  |
| 133 | 8.5 | Develop system integration tests for the Authentication Service |  | 3d | 2008-07-17 A | 2008-07-21 A | 129 | 100% |  |  |  | Steve Langella [80%] | 19.2h | 19.2h |
| 134 | 8.6 | Develop system integration tests for the GTS |  | 10d | 2008-07-22 | 2008-08-04 | 133 |  |  | 1.36d | 0d | Steve Langella [80%] | 64h |  |
| 135 | 8.7 | SyncGTS needs to use service property for sync description |  | 1d | 2008-08-05 | 2008-08-05 | 134 |  |  | 1.36d | 0d | Steve Langella [80%] | 6.4h |  |
| 136 | 8.8 | API to discover trusted IDs (Use case for caB2B security requirements) |  | 2d | 2008-08-06 | 2008-08-07 | 135 |  |  | 1.36d | 0d | Steve Langella [80%] | 12.8h |  |
| 137 | 8.9 | Service Security Client needs a way to say to always use credential |  | 1d | 2008-08-08 | 2008-08-08 | 136 |  |  | 1.36d | 0d | Steve Langella [80%] | 6.4h |  |
| 138 | 8.10 | Spring enable Dorian |  | 3d | 2008-08-11 | 2008-08-13 | 137 |  |  | 1.36d | 0d | Steve Langella [80%] | 19.2h |  |
| 139 | 8.11 | Implement new Authentication Service interface |  | 5d | 2008-08-14 | 2008-08-20 | 138 |  |  | 1.36d | 0d | Steve Langella [80%] | 32h |  |
| 140 | 8.12 | Add Authentication Profile Metadata to Dorian. |  | 1d | 2008-08-21 | 2008-08-21 | 139 |  |  | 1.36d | 0d | Steve Langella [80%] | 6.4h |  |
| 141 | 8.13 | Extend Trusted Identity Provider information to include information regarding the IdP's Authentication Service |  | 2d | 2008-08-22 | 2008-08-25 | 140 |  |  | 1.36d | 0d | Steve Langella [80%] | 12.8h |  |
| 142 | 8.14 | Add Trusted IdP metadata to Dorian |  | 1d | 2008-08-26 | 2008-08-26 | 141 |  |  | 1.36d | 0d | Steve Langella [80%] | 6.4h |  |
| 143 | 8.15 | Move from issuing Proxy Certificates to Issuing short term certificates. |  | 10d | 2008-07-18 | 2008-07-31 | 129 |  |  | 19.36d | 19d | Steve Langella [80%] | 64h |  |
| 144 | 8.16 | Enable Dorian Host Certificates to work with new version of IE and Firefox |  | 3d | 2008-07-18 | 2008-07-22 | 129 |  |  | 26.36d | 26d | Steve Langella [80%] | 19.2h |  |
| 145 | 8.17 | Add Account Audting to Dorian |  | 10d | 2008-07-18 | 2008-07-31 | 129 |  |  | 19.36d | 19d | Steve Langella [80%] | 64h |  |
| 146 | 8.18 | Reformat GAARDS UI to display properly on the MAC |  | 10d | 2008-07-18 | 2008-07-31 | 129 |  |  | 19.36d | 19d | Steve Langella [80%] | 64h |  |
| 147 | 8.19 | Finish | milestone | 0d | 2008-08-26 | 2008-08-26 | 130, 131, 132, 133, 134, 135, 136, 137, 138, 139, 140, 141, 142, 143, 144, 145, 146 |  |  | 1.36d | 0d |  |  |  |
| 148 | 9.0 | **Incubation** |  | 1d? | 2008-07-17 | 2008-07-17 |  |  |  | 29.36d |  |  | 6.4h |  |
| 149 | 9.1 | Start | milestone | 0d | 2008-07-17 | 2008-07-17 |  |  |  | 29.36d | 0d |  |  |  |
| 150 | 9.2 | WSRF.NET (support) |  | 1d? | 2008-07-17 | 2008-07-17 | 149 |  |  | 29.36d | 0d | Shannon Hastings [80%] | 6.4h |  |
| 151 | 9.0 | FInish | milestone | 0d | 2008-07-17 | 2008-07-17 | 150 |  |  | 30.36d |  |  |  |  |

| ID | WBS | Task | Type | Duration | Start | Finish | Predecessors | Total slack | Free slack | Resources | Work |
| --- | --- | --- | --- | --- | --- | --- | --- | --- | --- | --- | --- |
| 152 | 10.0 | **Documentation** |  | 4.64d? | 2008-07-17 | 2008-07-23 |  | 26.72d |  |  | 106.4h |
| 153 | 10.1 | Start | milestone | 0d | 2008-07-17 | 2008-07-17 |  | 26.72d | 0d |  |  |
| 154 | 10.2 | Update Administrator Guide |  | 2.5d? | 2008-07-17 | 2008-07-21 | 153 | 28.86d | 1.14d | Carolyn Klinger | 20h |
| 155 | 10.3 | Update Install Guide |  | 0.51d? | 2008-07-17 | 2008-07-18 | 153 | 30.11d | 3.38d | Carolyn Klinger; Steve Langella [80%]; Scott Oster [50%]; Shannon Hastings [80%]; David Ervin [80%] | 8h |
| 156 | 10.4 | Update User Guide |  | 1.28d? | 2008-07-17 | 2008-07-18 | 153 | 26.72d | 0d | Carolyn Klinger; David Ervin [80%]; Scott Oster [50%]; Shannon Hastings [80%]; Steve Langella [80%] | 20h |
| 157 | 10.5 | Update design documents |  | 1d? | 2008-07-18 | 2008-07-21 | 156 | 26.72d | 0d | Scott Oster [50%]; Steve Langella [80%]; Shannon Hastings [80%]; David Ervin [80%] | 23.2h |
| 158 | 10.6 | Update caGrid overview |  | 1d? | 2008-07-21 | 2008-07-22 | 157 | 26.72d | 0d | Scott Oster [50%]; John Eisenschmidt | 12h |
| 159 | 10.7 | Update wiki |  | 1d? | 2008-07-22 | 2008-07-23 | 158 | 26.72d | 0d | Scott Oster [50%]; Steve Langella [80%]; Shannon Hastings [80%]; David Ervin [80%] | 23.2h |
| 160 | 10.8 | Finish | milestone | 0d | 2008-07-23 | 2008-07-23 | 154, 155, 159 | 26.72d |  |  |  |
| 161 | 11.0 | **Quality Assurance** |  | 30d? | 2008-07-17 | 2008-08-27 |  | 1.36d |  |  | 96h |
| 162 | 11.1 | Start | milestone | 0d | 2008-07-17 | 2008-07-17 |  | 29.36d | 0d |  |  |
| 163 | 11.2 | Test GME |  | 1d? | 2008-08-15 | 2008-08-15 | 162, 13 | 9.36d |  | Quality Assurance | 8h |
| 164 | 11.3 | Test caDSR Replacement |  | 1d? | 2008-08-15 | 2008-08-15 | 162, 20 | 9.36d |  | Quality Assurance | 8h |
| 165 | 11.4 | Test WebSSO |  | 1d? | 2008-07-21 | 2008-07-21 | 162, 84 | 28.36d |  | Quality Assurance | 8h |
| 166 | 11.5 | Test release on new tech stack |  | 1d? | 2008-07-17 | 2008-07-17 | 162, 92 | 30.36d |  | Quality Assurance | 8h |
| 167 | 11.6 | Test Introduce |  | 1d? | 2008-08-15 | 2008-08-15 | 162, 127 | 9.36d |  | Quality Assurance | 8h |
| 168 | 11.7 | Test Security |  | 1d? | 2008-08-27 | 2008-08-27 | 162, 147 | 1.36d |  | Quality Assurance | 8h |
| 169 | 11.8 | Test WSRF.NET |  | 1d? | 2008-07-18 | 2008-07-18 | 162, 150 | 29.36d |  | Quality Assurance | 8h |
| 170 | 11.9 | Test Identifiers |  | 1d? | 2008-07-17 | 2008-07-17 | 162 | 30.36d |  | Quality Assurance | 8h |
| 171 | 11.10 | Test Metrics |  | 1d? | 2008-07-17 | 2008-07-17 | 162 | 30.36d |  | Quality Assurance | 8h |
| 172 | 11.11 | Test Data Services |  | 1d? | 2008-08-07 | 2008-08-07 | 162, 107 | 15.36d |  | Quality Assurance | 8h |
| 173 | 11.12 | Test caGrid 1.3 Grid Services |  | 1d? | 2008-08-14 | 2008-08-15 | 162, 185 | 8.5d | 0d | Quality Assurance | 8h |
| 174 | 11.13 | Test QA integration scenarios |  | 1d? | 2008-08-15 | 2008-08-18 | 173 | 8.5d | 0d | Quality Assurance | 8h |
| 175 | 11.14 | Finish | milestone | 0d | 2008-08-18 | 2008-08-18 | 174 | 8.5d |  | Quality Assurance |  |

| ID | WBS | Task | Type | Duration | Start | Finish | Predecessors | Total slack | Free slack | Resources | Work |
| --- | --- | --- | --- | --- | --- | --- | --- | --- | --- | --- | --- |
| 176 | 12.0 | **Deployment** |  | 31.36d? | 2008-07-17 | 2008-08-29 |  | 0d |  |  | 239.2h |
| 177 | 12.1 | Start | milestone | 0d | 2008-07-17 | 2008-07-17 |  | 19d | 0d |  |  |
| 178 | 12.2 | Create release notes |  | 1d? | 2008-07-18 | 2008-07-18 | 177 | 27.36d | 0d | Scott Oster [50%] | 4h |
| 179 | 12.3 | Create 1.3 target_grid configurations |  | 2d? | 2008-07-21 | 2008-07-22 | 178 | 27.36d |  | Scott Oster [50%] | 8h |
| 180 | 12.4 | **Create 1.3 release branch in CVS** |  | 2d? | 2008-07-17 | 2008-07-18 |  | 19d |  |  | 12h |
| 181 | 12.4.1 | Update project versions |  | 1d? | 2008-07-17 | 2008-07-17 | 177 | 19d |  | Scott Oster [50%] | 4h |
| 182 | 12.4.2 | update eclipse projects |  | 1d? | 2008-07-18 | 2008-07-18 | 177 | 29.36d |  | Scott Oster [50%] | 4h |
| 183 | 12.4.3 | remove any projects which wont be released in 1.3 |  | 1d? | 2008-07-18 | 2008-07-18 | 177 | 29.36d |  | Scott Oster [50%] | 4h |
| 184 | 12.5 | Update LICENSE |  | 1d? | 2008-07-17 | 2008-07-17 | 177 | 19.86d |  | John Eisenschmidt | 8h |
| 185 | 12.6 | Update core caGrid Services using Introduce 1.3 |  | 0.86d? | 2008-08-14 | 2008-08-14 | 123, 181 | 0d |  | Shannon Hastings [80%]; Steve Langella [80%]; Scott Oster [50%]; David Ervin [80%] | 20h |
| 186 | 12.7 | Validate core services' metadata |  | 2d? | 2008-07-17 | 2008-07-18 | 177 | 28.36d |  | Shannon Hastings [80%]; Steve Langella [80%]; Scott Oster [50%]; David Ervin [80%] | 23.2h |
| 187 | 12.8 | publish release IVY repositories |  | 3d? | 2008-07-18 | 2008-07-22 | 177 | 26.36d |  | Scott Oster [50%] | 12h |
| 188 | 12.9 | create installer release |  | 2d? | 2008-08-14 | 2008-08-18 | 184, 185 | 0d |  | Scott Oster [50%] | 8h |
| 189 | 12.10 | post installer properties file to FTP site |  | 2d? | 2008-07-17 | 2008-07-18 | 177 | 29.36d |  | Scott Oster [50%]; Systems | 12h |
| 190 | 12.11 | create gforge release |  | 2d? | 2008-07-18 | 2008-07-21 | 177 | 27.36d |  | Scott Oster [50%] | 8h |
| 191 | 12.12 | Write Deployment Instructions |  | 1.92d? | 2008-07-18 | 2008-07-21 | 177 | 28.44d |  | Steve Langella [80%]; Scott Oster [50%] | 20h |
| 192 | 12.13 | Redeploy QA Grid |  | 2.5d? | 2008-08-18 | 2008-08-21 | 188 | 0d |  | Quality Assurance | 20h |
| 193 | 12.14 | Redeploy Training Grid |  | 1.92d? | 2008-08-18 | 2008-08-20 | 188 | 5.58d |  | Steve Langella [80%]; Scott Oster [50%] | 20h |
| 194 | 12.15 | Redeploy Staging Grid |  | 2.5d? | 2008-08-21 | 2008-08-25 | 192 | 0d |  | Systems | 20h |
| 195 | 12.16 | Redeploy Production Grid |  | 2.5d? | 2008-08-25 | 2008-08-28 | 194 | 0d |  | Systems | 20h |
| 196 | 12.17 | Update Zope / Plome |  | 1d? | 2008-07-17 | 2008-07-17 | 177 | 29.36d |  | John Eisenschmidt | 8h |
| 197 | 12.18 | Update gforge |  | 1d? | 2008-07-17 | 2008-07-17 | 177 | 29.36d |  | John Eisenschmidt | 8h |
| 198 | 12.19 | Send Release Announcement |  | 1d? | 2008-08-28 | 2008-08-29 | 195, 196, 197, 193, 190, 186, 187 | 0d |  | John Eisenschmidt | 8h |
| 199 | 12.20 | Finish | milestone | 0d | 2008-08-29 | 2008-08-29 | 198 | 0d |  |  |  |

Notes:
- 193: In the past, we have deployed the training grid before other tiers, as we develop the deployment process document in doing so
